# iTRAAC v2

Schedule from MS Project, 2009-04-14 to 2012-01-25, A marks actual dates.
Grizli777

## Calendars

- Standard: Mon-Fri 08:00-12:00, 13:00-17:00; Sat-Sun off.

## Resources

| Resource |
| --- |
| Del |
| Brent |
| Bill McNeil |
| TBD |
| ??? |
| Melanie |
| ASP |
| B |

## Schedule

| ID | WBS | Task | Type | Duration | Start | Finish | Predecessors | Complete | Remaining | Baseline start | Baseline finish | Baseline duration | Total slack | Resources | Work | Actual work |
| --- | --- | --- | --- | --- | --- | --- | --- | --- | --- | --- | --- | --- | --- | --- | --- | --- |
| 1 | 1 | **iTRAAC v2 - Phase 1** |  | 727d? | 2009-04-14 A | 2012-01-25 |  | 53% | 340.83d? | 2009-04-14 | 2012-02-22 | 747d? | 0d | Brent | 19528h | 7847.38h |
| 2 | 1.1 | Implementing UTAP contract data entry web app |  | 120d? | 2009-04-14 A | 2009-09-28 A |  | 100% |  | 2009-04-14 | 2009-09-28 | 120d? |  |  |  |  |
| 3 | 1.2 | Waiting for development environment (software & VM) |  | 1d? | 2009-09-29 A | 2009-09-29 A | 2 | 100% |  | 2009-09-29 | 2009-09-29 | 1d? |  |  |  |  |
| 4 | 1.3 | Initial Project Plan |  | 5d? | 2009-09-30 A | 2009-10-06 A | 3 | 100% |  | 2009-10-01 | 2009-10-07 | 5d? |  | Brent | 40h | 40h |
| 5 | 1.4 | **Analysis** |  | 20d? | 2009-10-07 A | 2009-11-03 A | 4 | 100% |  | 2009-10-08 | 2009-11-04 | 20d? |  | Brent | 520h | 520h |
| 6 | 1.4.1 | **Requirements gathering** |  | 12d? | 2009-10-07 A | 2009-10-22 A |  | 100% |  | 2009-10-08 | 2009-10-23 | 12d? |  | Brent | 232h | 232h |
| 7 | 1.4.1.1 | Requirements Gap Analysis (v1 to v2) |  | 5d? | 2009-10-07 A | 2009-10-13 A |  | 100% |  | 2009-10-08 | 2009-10-14 | 5d? |  | Brent | 40h | 40h |
| 8 | 1.4.1.2 | Separate raw requirements into business vs. technical |  | 1d? | 2009-10-14 A | 2009-10-14 A | 7 | 100% |  | 2009-10-15 | 2009-10-15 | 1d? |  | Brent | 8h | 8h |
| 9 | 1.4.1.3 | Perform initial requirements prioritization |  | 1d? | 2009-10-15 A | 2009-10-15 A | 8 | 100% |  | 2009-10-16 | 2009-10-16 | 1d? |  | Brent | 8h | 8h |
| 10 | 1.4.1.4 | **[*Deliverable] Requirements Document** |  | 5d? | 2009-10-16 A | 2009-10-22 A | 9 | 100% |  | 2009-10-19 | 2009-10-23 | 5d? |  | Brent | 80h | 80h |
| 11 | 1.4.1.4.1 | Incorporate changes based on feedback and resubmit until approved |  | 5d? | 2009-10-16 A | 2009-10-22 A |  | 100% |  | 2009-10-19 | 2009-10-23 | 5d? |  | Brent | 40h | 40h |
| 12 | 1.4.2 | **[*Deliverable] Use cases (e.g. Create New User, Sell New VAT Forms Package)** |  | 6d? | 2009-10-23 A | 2009-10-30 A | 6 | 100% |  | 2009-10-26 | 2009-11-02 | 6d? |  | Brent | 96h | 96h |
| 13 | 1.4.2.1 | [Deliverable – Del] Example use case diagrams for reference |  | 1d? | 2009-10-23 A | 2009-10-23 A |  | 100% |  | 2009-10-26 | 2009-10-26 | 1d? |  | Del | 8h | 8h |
| 14 | 1.4.2.2 | Map business requirements into “Happy Path” style use cases (see Glossary) such that every major business requirement will be covered |  | 5d? | 2009-10-26 A | 2009-10-30 A | 13 | 100% |  | 2009-10-27 | 2009-11-02 | 5d? |  | Brent | 40h | 40h |
| 15 | 1.4.3 | **[*Deliverable] Statement of Scope** |  | 2d? | 2009-11-02 A | 2009-11-03 A | 12 | 100% |  | 2009-11-03 | 2009-11-04 | 2d? |  | Brent | 32h | 32h |
| 16 | 1.4.3.1 | Phase 1 - German VAT Forms |  | 2d? | 2009-11-02 A | 2009-11-03 A |  | 100% |  | 2009-11-03 | 2009-11-04 | 2d? |  | Brent | 16h | 16h |
| 17 | 1.4.3.2 | Phase 2 - European VAT Forms | milestone | 0d? | 2009-11-03 A | 2009-11-03 A | 16 | 100% |  | 2009-11-04 | 2009-11-04 | 0d? |  | Brent |  |  |
| 18 | 1.4.3.3 | Phase “x” - UTAP Support | milestone | 0d? | 2009-11-03 A | 2009-11-03 A | 17 | 100% |  | 2009-11-04 | 2009-11-04 | 0d? |  | Brent |  |  |
| 19 | 1.5 | **Design** |  | 58d? | 2009-11-04 A | 2010-01-22 A | 5 | 100% |  | 2009-11-05 | 2010-01-25 | 58d? |  | Brent | 1088h | 1088h |
| 20 | 1.5.1 | **[Deliverable - Bill McNeil and Del] Approved development architecture best practices document** |  | 1d? | 2009-11-04 A | 2009-11-04 A |  | 100% |  | 2009-11-05 | 2009-11-05 | 1d? |  | Bill McNeil; Del | 32h | 32h |
| 21 | 1.5.1.1 | accredited security mechanisms |  | 1d? | 2009-11-04 A | 2009-11-04 A |  | 100% |  | 2009-11-05 | 2009-11-05 | 1d? |  | Bill McNeil; Del | 16h | 16h |
| 22 | 1.5.2 | **Establish application login/authentication approach** |  | 5d? | 2009-11-05 A | 2009-11-11 A | 20 | 100% |  | 2009-11-06 | 2009-11-12 | 5d? |  | Brent | 80h | 80h |
| 23 | 1.5.2.1 | AD or STAMIS workstations? |  | 1d? | 2009-11-05 A | 2009-11-05 A |  | 100% |  | 2009-11-06 | 2009-11-06 | 1d? |  | Brent | 8h | 8h |
| 24 | 1.5.2.2 | CAC sign in? |  | 1d? | 2009-11-06 A | 2009-11-06 A | 23 | 100% |  | 2009-11-09 | 2009-11-09 | 1d? |  | Brent | 8h | 8h |
| 25 | 1.5.2.3 | Single sign on to iTRAAC application? |  | 1d? | 2009-11-09 A | 2009-11-09 A | 24 | 100% |  | 2009-11-10 | 2009-11-10 | 1d? |  | Brent | 8h | 8h |
| 26 | 1.5.2.4 | Microsoft “trusted security” connection to the database |  | 1d? | 2009-11-10 A | 2009-11-10 A | 25 | 100% |  | 2009-11-11 | 2009-11-11 | 1d? |  | Brent | 8h | 8h |
| 27 | 1.5.2.5 | Any non CAC login requirements? Air Force, etc. |  | 1d? | 2009-11-11 A | 2009-11-11 A | 26 | 100% |  | 2009-11-12 | 2009-11-12 | 1d? |  | Brent | 8h | 8h |
| 28 | 1.5.3 | [*Deliverable] Chosen primary architectural components list (e.g. .Net Framework, SQL Server, Native SQL Server client driver, etc.) |  | 2d | 2009-11-12 A | 2009-11-13 A | 22 | 100% |  | 2009-11-13 | 2009-11-16 | 2d |  |  | 16h | 16h |
| 29 | 1.5.4 | [Deliverable] (Excel) matrix mapping use cases to functional units. E.g. the screens, reports, major subroutines & stored procedures that support each use case. Typically functional units are combined and re-used among more than one use case. |  | 5d | 2009-11-16 A | 2009-11-20 A | 28 | 100% |  | 2009-11-17 | 2009-11-23 | 5d |  |  | 40h | 40h |
| 30 | 1.5.5 | [*Deliverable] Initial prioritized list of functional units (ongoing, see development section below) |  | 10d | 2009-11-23 A | 2009-12-04 A | 29 | 100% |  | 2009-11-24 | 2009-12-07 | 10d |  |  | 80h | 80h |
| 31 | 1.5.6 | [*Deliverable] Wireframes of primary screens & reports with clarifying side notes where needed |  | 15d | 2009-12-07 A | 2009-12-25 A | 30 | 100% |  | 2009-12-08 | 2009-12-28 | 15d |  |  | 120h | 120h |
| 32 | 1.5.7 | Establish required level of built in application help (e.g. full blown context sensitive? Just key screenshots explained?) |  | 2d | 2009-12-28 A | 2009-12-29 A | 31 | 100% |  | 2009-12-29 | 2009-12-30 | 2d |  | Brent | 16h | 16h |

| ID | WBS | Task | Duration | Start | Finish | Predecessors | Complete | Remaining | Baseline start | Baseline finish | Baseline duration | Total slack | Free slack | Resources | Work | Actual work |
| --- | --- | --- | --- | --- | --- | --- | --- | --- | --- | --- | --- | --- | --- | --- | --- | --- |
| 33 | 1.5.8 | **[Deliverable] Physical relational data model** | 10d? | 2009-12-30 A | 2010-01-12 A | 32 | 100% |  | 2009-12-31 | 2010-01-13 | 10d? |  |  | Brent | 176h | 176h |
| 34 | 1.5.8.1 | TBD work | 5d | 2009-12-30 A | 2010-01-05 A |  | 100% |  | 2009-12-31 | 2010-01-06 | 5d |  |  | Brent | 40h | 40h |
| 35 | 1.5.8.2 | revamping the audit log design | 3d | 2010-01-06 A | 2010-01-08 A | 34 | 100% |  | 2010-01-07 | 2010-01-11 | 3d |  |  | Brent | 24h | 24h |
| 36 | 1.5.8.3 | **revamping the status flag design** | 2d? | 2010-01-11 A | 2010-01-12 A | 35 | 100% |  | 2010-01-12 | 2010-01-13 | 2d? |  |  | Brent | 32h | 32h |
| 37 | 1.5.8.3.1 | Forms status | 1d? | 2010-01-11 A | 2010-01-11 A |  | 100% |  | 2010-01-12 | 2010-01-12 | 1d? |  |  | Brent | 8h | 8h |
| 38 | 1.5.8.3.2 | Customer status | 1d | 2010-01-12 A | 2010-01-12 A | 37 | 100% |  | 2010-01-13 | 2010-01-13 | 1d |  |  | Brent | 8h | 8h |
| 39 | 1.5.9 | Determine feasibility of running production pilot in parallel | 3d | 2010-01-13 A | 2010-01-15 A | 33 | 100% |  | 2010-01-14 | 2010-01-18 | 3d |  |  | Brent | 24h | 24h |
| 40 | 1.5.10 | [*Deliverable] Development Project Plan – Gantt chart of the WBS (Work Breakdown Structure of the primary application components) | 5d | 2010-01-18 A | 2010-01-22 A | 39 | 100% |  | 2010-01-19 | 2010-01-25 | 5d |  |  |  | 40h | 40h |
| 41 | 1.6 | Vista upgrades to iTRAAC Garrison Servers | 20d | 2010-01-25 A | 2010-02-19 A | 19 | 100% |  | 2010-01-26 | 2010-03-08 | 30d? |  |  | Brent | 160h | 160h |
| 42 | 1.7 | Kilbourne Datacenter Meltdown | 20d | 2010-03-08 A | 2010-04-02 A | 41 | 100% |  | 2010-03-09 | 2010-04-19 | 30d? |  |  |  |  |  |
| 43 | 1.8 | Personal Training (WPF, Army Requirements) | 20d | 2010-04-19 A | 2010-05-14 A | 42 | 100% |  | 2010-04-20 | 2010-05-31 | 30d? |  |  | Brent | 160h | 160h |
| 44 | 1.9 | **Development** | 294d? | 2010-05-31 A | 2011-07-14 | 43 | 36% | 187.94d? | 2010-06-01 | 2011-08-11 | 313d? | 0d |  | Brent | 9016h | 2790.05h |
| 45 | 1.9.1 | **Stand up DEV environment** | 15d? | 2010-05-31 A | 2010-06-18 A |  | 100% |  | 2010-06-01 | 2010-06-21 | 15d? |  |  | ASP | 360h | 360h |
| 46 | 1.9.1.1 | Obtain & install DEV environment hardware | 5d? | 2010-05-31 A | 2010-06-04 A |  | 100% |  | 2010-06-01 | 2010-06-07 | 5d? |  |  | Melanie; Del | 80h | 80h |
| 47 | 1.9.1.2 | Obtain & install DEV environment software | 5d? | 2010-06-07 A | 2010-06-11 A | 46 | 100% |  | 2010-06-08 | 2010-06-14 | 5d? |  |  | Melanie; Del | 80h | 80h |
| 48 | 1.9.1.3 | Is there a 5thSignal requirement for development to be physically detached from NIPRNET until final version has been officially approved? If so, co-location of the dev workstation and server becomes a physical constraint | 5d? | 2010-06-14 A | 2010-06-18 A | 47 | 100% |  | 2010-06-15 | 2010-06-21 | 5d? |  |  | Melanie; Del | 80h | 80h |
| 49 | 1.9.2 | Establish version control/change management system – e.g. Visual Source Safe | 1d? | 2010-06-21 A | 2010-06-21 A | 45 | 100% |  | 2010-06-22 | 2010-06-22 | 1d? |  |  | Brent | 8h | 8h |
| 50 | 1.9.3 | Establish automated build script | 1d? | 2010-06-22 | 2010-06-22 | 49 |  |  | 2010-06-23 | 2010-06-23 | 1d? | 79.99d | 0d | Brent | 8h |  |
| 51 | 1.9.4 | Establish new build notification distro list and deployment location (i.e. where everyone can readily find a current build to kick the tires whenever they have time) | 1d? | 2010-06-23 | 2010-06-23 | 50 |  |  | 2010-06-24 | 2010-06-24 | 1d? | 79.99d | 0d | Brent | 8h |  |
| 52 | 1.9.5 | Establish SharePoint workspace for project communication – living prioritized functional unit list, status reports, deliverables, build links, etc. | 1d? | 2010-06-24 | 2010-06-24 | 51 |  |  | 2010-06-25 | 2010-06-25 | 1d? | 79.99d | 0d | Brent | 8h |  |
| 53 | 1.9.6 | **WBS** | 275d? | 2010-06-25 A | 2011-07-14 | 52 | 33% | 184.97d? | 2010-06-28 | 2011-08-11 | 294d? | 0d |  | Brent | 6408h | 1622.63h |
| 54 | 1.9.6.1 | **[*Deliverable] Application visual “shell”** | 31d? | 2010-06-25 A | 2010-08-06 A |  | 100% |  | 2010-06-28 | 2010-08-09 | 31d? |  |  | Brent | 496h | 496h |
| 55 | 1.9.6.1.1 | Overall visual layout structure | 15d? | 2010-06-25 A | 2010-07-15 A |  | 100% |  | 2010-06-28 | 2010-07-16 | 15d? |  |  | Brent | 120h | 120h |
| 56 | 1.9.6.1.2 | Primary navigation elements (menus, nav bars, etc.) | 15d? | 2010-07-16 A | 2010-08-05 A | 55 | 100% |  | 2010-07-19 | 2010-08-06 | 15d? |  |  | Brent | 120h | 120h |
| 57 | 1.9.6.1.3 | Standardized icons | 1d? | 2010-08-06 A | 2010-08-06 A | 56 | 100% |  | 2010-08-09 | 2010-08-09 | 1d? |  |  | Brent | 8h | 8h |

| ID | WBS | Task | Duration | Start | Finish | Predecessors | Complete | Remaining | Baseline start | Baseline finish | Baseline duration | Total slack | Free slack | Resources | Work | Actual work |
| --- | --- | --- | --- | --- | --- | --- | --- | --- | --- | --- | --- | --- | --- | --- | --- | --- |
| 58 | 1.9.6.2 | **Data Access** | 40d? | 2010-08-10 A | 2010-10-04 | 54 | 65% | 14d? | 2010-08-10 | 2010-10-04 | 40d? | 0d |  | Brent | 640h | 416h |
| 59 | 1.9.6.2.1 | Business Object approach | 20d? | 2010-08-10 A | 2010-09-06 |  | 80% | 4d? | 2010-08-10 | 2010-09-06 | 20d? | 10d | 0d | Brent | 160h | 128h |
| 60 | 1.9.6.2.2 | Modified, Load, Save | 20d? | 2010-09-07 A | 2010-10-04 | 59 | 50% | 10d? | 2010-09-07 | 2010-10-04 | 20d? | 0d |  | Brent | 160h | 80h |
| 61 | 1.9.6.3 | **Security model** | 14d? | 2010-10-05 | 2010-10-22 | 58 |  |  | 2010-10-05 | 2010-10-22 | 14d? | 0d |  | Brent | 224h |  |
| 62 | 1.9.6.3.1 | Implement accredited security mechanisms | 10d? | 2010-10-05 | 2010-10-18 |  |  |  | 2010-10-05 | 2010-10-18 | 10d? | 0d |  | Brent | 80h |  |
| 63 | 1.9.6.3.2 | Client to SQL Server network encryption | 1d? | 2010-10-19 | 2010-10-19 | 62 |  |  | 2010-10-19 | 2010-10-19 | 1d? | 0d |  | Brent | 8h |  |
| 64 | 1.9.6.3.3 | SQL Server host data encryption | 3d? | 2010-10-20 | 2010-10-22 | 63 |  |  | 2010-10-20 | 2010-10-22 | 3d? | 0d |  | Brent | 24h |  |
| 65 | 1.9.6.4 | **Primary Workflow Screens** | 13d? | 2010-10-25 | 2010-11-10 | 61 |  |  | 2010-10-25 | 2010-11-10 | 13d? | 0d |  | Brent | 208h |  |
| 66 | 1.9.6.4.1 | Sell new forms | 3d? | 2010-10-25 | 2010-10-27 |  |  |  | 2010-10-25 | 2010-10-27 | 3d? | 0d |  | Brent | 24h |  |
| 67 | 1.9.6.4.2 | Rapid return forms | 5d? | 2010-10-28 | 2010-11-03 | 66 |  |  | 2010-10-28 | 2010-11-03 | 5d? | 0d |  | Brent | 40h |  |
| 68 | 1.9.6.4.3 | Process & File returned forms | 5d? | 2010-11-04 | 2010-11-10 | 67 |  |  | 2010-11-04 | 2010-11-10 | 5d? | 0d |  | Brent | 40h |  |
| 69 | 1.9.6.5 | **"List" Screens** | 13d? | 2010-11-11 A | 2010-11-29 | 65 | 77% | 3d? | 2010-11-11 | 2010-11-29 | 13d? | 23d | 0d | Brent | 208h | 160h |
| 70 | 1.9.6.5.1 | Customer search | 10d? | 2010-11-11 A | 2010-11-24 A |  | 100% |  | 2010-11-11 | 2010-11-24 | 10d? |  |  | Brent | 80h | 80h |
| 71 | 1.9.6.5.2 | Daily Activity - Primarily a "new forms" list | 3d? | 2010-11-25 | 2010-11-29 | 70 |  |  | 2010-11-25 | 2010-11-29 | 3d? | 23d |  | Brent | 24h |  |
| 72 | 1.9.6.6 | **Major business entity view/edit detail screens** | 67d? | 2010-11-30 A | 2011-03-02 | 69 | 34% | 44.3d? | 2010-11-30 | 2011-03-16 | 77d? | 0d |  | Brent | 1256h | 363.2h |
| 73 | 1.9.6.6.1 | **User** | 6d? | 2010-11-30 | 2010-12-07 |  |  |  | 2010-11-30 | 2010-12-07 | 6d? | 40d | 0d | Brent | 96h |  |
| 74 | 1.9.6.6.1.1 | Manager | 3d? | 2010-11-30 | 2010-12-02 |  |  |  | 2010-11-30 | 2010-12-02 | 3d? | 40d | 0d | Brent | 24h |  |
| 75 | 1.9.6.6.1.2 | Agent | 3d? | 2010-12-03 | 2010-12-07 | 74 |  |  | 2010-12-03 | 2010-12-07 | 3d? | 40d |  | Brent | 24h |  |
| 76 | 1.9.6.6.2 | **Customer** | 17d? | 2010-12-08 | 2010-12-30 | 73 |  |  | 2010-12-08 | 2010-12-30 | 17d? | 40d | 0d | Brent | 272h |  |
| 77 | 1.9.6.6.2.1 | Sponsor | 15d? | 2010-12-08 | 2010-12-28 |  |  |  | 2010-12-08 | 2010-12-28 | 15d? | 40d | 0d | Brent | 120h |  |
| 78 | 1.9.6.6.2.2 | Dependents - Spouse, children | 2d? | 2010-12-29 | 2010-12-30 | 77 |  |  | 2010-12-29 | 2010-12-30 | 2d? | 40d |  | Brent | 16h |  |
| 79 | 1.9.6.6.3 | Tax form | 20d | 2010-12-31 A | 2011-01-27 | 76 | 80% | 4d | 2010-12-31 | 2011-02-10 | 30d? | 24d |  | Brent | 160h | 128h |
| 80 | 1.9.6.6.4 | Tax package | 1d? | 2011-01-28 A | 2011-01-28 A | 79 | 100% |  | 2011-02-11 | 2011-02-11 | 1d? |  |  | Brent | 8h | 8h |
| 81 | 1.9.6.6.5 | VAT Office (POC, Address, etc.) | 5d? | 2011-01-31 | 2011-02-04 | 80 |  |  | 2011-02-14 | 2011-02-18 | 5d? | 5.7d | 0d | Brent | 40h |  |
| 82 | 1.9.6.6.6 | Vendor | 15d? | 2011-02-07 A | 2011-02-25 | 81 | 20% | 12d? | 2011-02-21 | 2011-03-11 | 15d? | 2.7d | 0d | Brent | 120h | 24h |
| 83 | 1.9.6.6.7 | Transaction Type | 1d? | 2011-02-28 A | 2011-02-28 | 82 | 90% | 0.1d? | 2011-03-14 | 2011-03-14 | 1d? | 1.8d | 0d | Brent | 8h | 7.2h |
| 84 | 1.9.6.6.8 | Goods & Services | 2d? | 2011-03-01 A | 2011-03-02 | 83 | 90% | 0.2d? | 2011-03-15 | 2011-03-16 | 2d? | 0d |  | Brent | 16h | 14.4h |

| ID | WBS | Task | Duration | Start | Finish | Predecessors | Baseline start | Baseline finish | Baseline duration | Total slack | Resources | Work |
| --- | --- | --- | --- | --- | --- | --- | --- | --- | --- | --- | --- | --- |
| 85 | 1.9.6.7 | **Settings Screens** | 16d? | 2011-03-03 | 2011-03-24 | 72 | 2011-03-17 | 2011-04-07 | 16d? | 0d | Brent | 256h |
| 86 | 1.9.6.7.1 | Printer/Form configuration | 3d? | 2011-03-03 | 2011-03-07 |  | 2011-03-17 | 2011-03-21 | 3d? | 0d | Brent | 24h |
| 87 | 1.9.6.7.2 | User Prefs - e.g. default filters, shortcut buttons, etc. | 10d? | 2011-03-08 | 2011-03-21 | 86 | 2011-03-22 | 2011-04-04 | 10d? | 0d | Brent | 80h |
| 88 | 1.9.6.7.3 | Local office settings | 3d? | 2011-03-22 | 2011-03-24 | 87 | 2011-04-05 | 2011-04-07 | 3d? | 0d | Brent | 24h |
| 89 | 1.9.6.8 | New Forms Layout & Printing Subsystem (anticipating Euro Forms in 26 languages) | 20d | 2011-03-25 | 2011-04-21 | 85 | 2011-04-08 | 2011-05-19 | 30d? | 0d | Brent | 160h |
| 90 | 1.9.6.9 | **Reporting** | 40d? | 2011-04-22 | 2011-06-16 | 89 | 2011-05-20 | 2011-07-14 | 40d? | 0d | Brent | 736h |
| 91 | 1.9.6.9.1 | End of day | 5d? | 2011-04-22 | 2011-04-28 |  | 2011-05-20 | 2011-05-26 | 5d? | 0d | Brent | 40h |
| 92 | 1.9.6.9.2 | End of Year sales & counts by office | 5d? | 2011-04-29 | 2011-05-05 | 91 | 2011-05-27 | 2011-06-02 | 5d? | 0d | Brent | 40h |
| 93 | 1.9.6.9.3 | Issued/Outstanding/Voided Counts and $$ totals by Office/date range for German/Euro then by Priced/Unpriced | 10d? | 2011-05-06 | 2011-05-19 | 92 | 2011-06-03 | 2011-06-16 | 10d? | 0d | Brent | 80h |
| 94 | 1.9.6.9.4 | Customer count by office by status (barred, etc.) | 3d? | 2011-05-20 | 2011-05-24 | 93 | 2011-06-17 | 2011-06-21 | 3d? | 0d | Brent | 24h |
| 95 | 1.9.6.9.5 | **Customs reports - Web Based, sortable, filterable and drill down to detail** | 17d? | 2011-05-25 | 2011-06-16 | 94 | 2011-06-22 | 2011-07-14 | 17d? | 0d | Brent | 232h |
| 96 | 1.9.6.9.5.1 | Reporting framework | 5d? | 2011-05-25 | 2011-05-31 |  | 2011-06-22 | 2011-06-28 | 5d? | 0d |  |  |
| 97 | 1.9.6.9.5.2 | vehicle | 3d? | 2011-06-01 | 2011-06-03 | 96 | 2011-06-29 | 2011-07-01 | 3d? | 0d | Brent | 24h |
| 98 | 1.9.6.9.5.3 | firearms | 3d? | 2011-06-06 | 2011-06-08 | 97 | 2011-07-04 | 2011-07-06 | 3d? | 0d | Brent | 24h |
| 99 | 1.9.6.9.5.4 | >10 forms in 60 days | 3d? | 2011-06-09 | 2011-06-13 | 98 | 2011-07-07 | 2011-07-11 | 3d? | 0d | Brent | 24h |
| 100 | 1.9.6.9.5.5 | >2000€ in month | 3d? | 2011-06-14 | 2011-06-16 | 99 | 2011-07-12 | 2011-07-14 | 3d? | 0d | Brent | 24h |
| 101 | 1.9.6.10 | Application help | 20d? | 2011-06-17 | 2011-07-14 | 90 | 2011-07-15 | 2011-08-11 | 20d? | 0d | TBD | 160h |
| 102 | 1.10 | **Release** | 139d? | 2011-07-15 | 2012-01-25 | 44 |  |  |  | 0d |  | 2728h |
| 103 | 1.10.1 | **IA Certification & Accreditation** | 40d? | 2011-07-15 | 2011-09-08 |  | 2011-08-12 | 2011-10-06 | 40d? | 0d | Brent; Del | 1120h |
| 104 | 1.10.1.1 | Documentation | 10d? | 2011-07-15 | 2011-07-28 |  | 2011-08-12 | 2011-08-25 | 10d? | 0d | Brent; Del | 160h |
| 105 | 1.10.1.2 | Accreditation Submission Process | 10d? | 2011-07-29 | 2011-08-11 | 104 | 2011-08-26 | 2011-09-08 | 10d? | 0d | Brent; Del | 160h |
| 106 | 1.10.1.3 | Application changes | 20d? | 2011-08-12 | 2011-09-08 | 105 | 2011-09-09 | 2011-10-06 | 20d? | 0d | Brent | 160h |
| 107 | 1.10.2 | **User Testing (Dev Environment)** | 25d? | 2011-09-09 | 2011-10-13 | 103 | 2011-10-07 | 2011-11-10 | 25d? | 0d | Brent | 448h |
| 108 | 1.10.2.1 | Cyclic process of testing and further development - Testing feedback will be actively incorporated into work products; e.g. bug fixes, functional enhancements, test plan modifications, etc. - resulting in ongoing reprioritization of functional unit implem | 15d? | 2011-09-09 | 2011-09-29 |  | 2011-10-07 | 2011-10-27 | 15d? | 0d | Brent | 120h |

| ID | WBS | Task | Duration | Start | Finish | Predecessors | Baseline start | Baseline finish | Baseline duration | Total slack | Resources | Work |
| --- | --- | --- | --- | --- | --- | --- | --- | --- | --- | --- | --- | --- |
| 109 | 1.10.2.2 | **Test Plans** | 6d? | 2011-09-30 | 2011-10-07 | 108 | 2011-10-28 | 2011-11-04 | 6d? | 0d | Brent | 96h |
| 110 | 1.10.2.2.1 | Generally correspond to use cases | 1d? | 2011-09-30 | 2011-09-30 |  | 2011-10-28 | 2011-10-28 | 1d? | 0d | Brent | 8h |
| 111 | 1.10.2.2.2 | [*Deliverable] Develop initial test plans - Important Note: Tasking the builder as the primary test plan contributor is not optimal due to developer “tunnel vision”. Therefore, test plan input should primarily come from the appropriate stakeholders (Bus | 5d? | 2011-10-03 | 2011-10-07 | 110 | 2011-10-31 | 2011-11-04 | 5d? | 0d | Brent | 40h |
| 112 | 1.10.2.3 | Establish short list of savvy VAT clerks and other key players that will test partially functional builds on a regular ongoing basis | 1d? | 2011-10-10 | 2011-10-10 | 109 | 2011-11-07 | 2011-11-07 | 1d? | 0d | Brent | 8h |
| 113 | 1.10.2.4 | [Deliverable] Status Reports - detailing user acceptance, notable feedback and changes | 3d? | 2011-10-11 | 2011-10-13 | 112 | 2011-11-08 | 2011-11-10 | 3d? | 0d | Brent | 24h |
| 114 | 1.10.3 | **Develop Training Materials** | 26d? | 2011-10-14 | 2011-11-18 | 107 | 2011-11-11 | 2011-12-16 | 26d? | 0d | Brent | 416h |
| 115 | 1.10.3.1 | [Deliverable] PowerPoint screen-shot walk through of the primary “happy path” use cases | 5d? | 2011-10-14 | 2011-10-20 |  | 2011-11-11 | 2011-11-17 | 5d? | 0d | Brent | 40h |
| 116 | 1.10.3.2 | Establish training manual and courseware provider | 1d? | 2011-10-21 | 2011-10-21 | 115 | 2011-11-18 | 2011-11-18 | 1d? | 0d | Brent | 8h |
| 117 | 1.10.3.3 | [*Deliverable] Training manual and courseware | 20d? | 2011-10-24 | 2011-11-18 | 116 | 2011-11-21 | 2011-12-16 | 20d? | 0d | TBD | 160h |
| 118 | 1.10.4 | **Pilot (Production Environment)** | 22d? | 2011-11-21 | 2011-12-20 | 114 | 2011-12-19 | 2012-01-17 | 22d? | 0d | Brent | 328h |
| 119 | 1.10.4.1 | Stand up parallel production pilot environment | 3d? | 2011-11-21 | 2011-11-23 |  | 2011-12-19 | 2011-12-21 | 3d? | 0d |  |  |
| 120 | 1.10.4.2 | Select 1-3 desirable locations for running stable production V2 builds in parallel with V1 | 1d? | 2011-11-24 | 2011-11-24 | 119 | 2011-12-22 | 2011-12-22 | 1d? | 0d | Brent | 8h |
| 121 | 1.10.4.3 | Allow time for feedback, minor changes in functionality and documentation | 15d? | 2011-11-25 | 2011-12-15 | 120 | 2011-12-23 | 2012-01-12 | 15d? | 0d | Brent | 120h |
| 122 | 1.10.4.4 | [Deliverable] Status Reports - detailing user acceptance, notable feedback and changes | 3d? | 2011-12-16 | 2011-12-20 | 121 | 2012-01-13 | 2012-01-17 | 3d? | 0d | Brent | 24h |
| 123 | 1.10.5 | **Full Rollout** | 26d? | 2011-12-21 | 2012-01-25 | 118 | 2012-01-18 | 2012-02-22 | 26d? | 0d | Brent | 416h |
| 124 | 1.10.5.1 | Determine physical location of training – on-site vs. centralized | 1d? | 2011-12-21 | 2011-12-21 |  | 2012-01-18 | 2012-01-18 | 1d? | 0d | Brent | 8h |
| 125 | 1.10.5.2 | Schedule and conduct training with VAT clerks in stages | 10d? | 2011-12-22 | 2012-01-04 | 124 | 2012-01-19 | 2012-02-01 | 10d? | 0d | Brent | 80h |
| 126 | 1.10.5.3 | Stage release to a few offices at a time to manage production support workload | 10d? | 2012-01-05 | 2012-01-18 | 125 | 2012-02-02 | 2012-02-15 | 10d? | 0d | Brent | 80h |
| 127 | 1.10.5.4 | Plan for feedback and minimal changes; most feedback will go on a v2.”xyz” project plan list | 5d? | 2012-01-19 | 2012-01-25 | 126 | 2012-02-16 | 2012-02-22 | 5d? | 0d | Brent | 40h |
