# iTRAAC v2

Schedule from MS Project, 2009-04-14 to 2010-07-01.
Grizli777

## Calendars

- Standard: Mon-Fri 08:00-12:00, 13:00-17:00; Sat-Sun off.

## Resources

| Resource |
| --- |
| Del |
| Brent |
| Bill McNeil |
| TBD |
| Melanie |

## Schedule

| ID | WBS | Task | Type | Duration | Start | Finish | Predecessors | Total slack | Resources | Work |
| --- | --- | --- | --- | --- | --- | --- | --- | --- | --- | --- |
| 1 | 1 | **iTRAAC v2 - Phase 1** |  | 318d? | 2009-04-14 | 2010-07-01 |  | 0d | Brent | 8848h |
| 2 | 1.1 | Initial Project Plan |  | 5d | 2009-04-14 | 2009-04-20 |  | 0d | Brent | 40h |
| 3 | 1.2 | **Analysis** |  | 20d? | 2009-04-21 | 2009-05-18 | 2 | 0d | Brent | 520h |
| 4 | 1.2.1 | **Requirements gathering** |  | 12d? | 2009-04-21 | 2009-05-06 |  | 0d | Brent | 232h |
| 5 | 1.2.1.1 | Requirements Gap Analysis (v1 to v2) |  | 5d | 2009-04-21 | 2009-04-27 |  | 0d | Brent | 40h |
| 6 | 1.2.1.2 | Separate raw requirements into business vs. technical |  | 1d? | 2009-04-28 | 2009-04-28 | 5 | 0d | Brent | 8h |
| 7 | 1.2.1.3 | Perform initial requirements prioritization |  | 1d? | 2009-04-29 | 2009-04-29 | 6 | 0d | Brent | 8h |
| 8 | 1.2.1.4 | **[*Deliverable] Requirements Document** |  | 5d | 2009-04-30 | 2009-05-06 | 7 | 0d | Brent | 80h |
| 9 | 1.2.1.4.1 | Incorporate changes based on feedback and resubmit until approved |  | 5d | 2009-04-30 | 2009-05-06 |  | 0d | Brent | 40h |
| 10 | 1.2.2 | **[*Deliverable] Use cases (e.g. Create New User, Sell New VAT Forms Package)** |  | 6d | 2009-05-07 | 2009-05-14 | 4 | 0d | Brent | 96h |
| 11 | 1.2.2.1 | [Deliverable – Del] Example use case diagrams for reference |  | 1d | 2009-05-07 | 2009-05-07 |  | 0d | Del | 8h |
| 12 | 1.2.2.2 | Map business requirements into “Happy Path” style use cases (see Glossary) such that every major business requirement will be covered |  | 5d | 2009-05-08 | 2009-05-14 | 11 | 0d | Brent | 40h |
| 13 | 1.2.3 | **[*Deliverable] Statement of Scope** |  | 2d | 2009-05-15 | 2009-05-18 | 10 | 0d | Brent | 32h |
| 14 | 1.2.3.1 | Phase 1 - German VAT Forms |  | 2d | 2009-05-15 | 2009-05-18 |  | 0d | Brent | 16h |
| 15 | 1.2.3.2 | Phase 2 - European VAT Forms | milestone | 0d | 2009-05-18 | 2009-05-18 | 14 | 0d | Brent |  |
| 16 | 1.2.3.3 | Phase “x” - UTAP Support | milestone | 0d | 2009-05-18 | 2009-05-18 | 15 | 0d | Brent |  |
| 17 | 1.3 | **Design** |  | 62d? | 2009-05-19 | 2009-08-12 | 3 | 0d | Brent | 1128h |
| 18 | 1.3.1 | [Deliverable - Bill McNeil and Del] Approved development architecture best practices document |  | 5d | 2009-05-19 | 2009-05-25 |  | 0d | Bill McNeil | 40h |
| 19 | 1.3.2 | **Establish application login/authentication approach** |  | 5d? | 2009-05-26 | 2009-06-01 | 18 | 0d | Brent | 80h |
| 20 | 1.3.2.1 | AD or STAMIS workstations? |  | 1d? | 2009-05-26 | 2009-05-26 |  | 0d | Brent | 8h |
| 21 | 1.3.2.2 | CAC sign in? |  | 1d? | 2009-05-27 | 2009-05-27 | 20 | 0d | Brent | 8h |
| 22 | 1.3.2.3 | Single sign on to iTRAAC application? |  | 1d? | 2009-05-28 | 2009-05-28 | 21 | 0d | Brent | 8h |
| 23 | 1.3.2.4 | Microsoft “trusted security” connection to the database |  | 1d? | 2009-05-29 | 2009-05-29 | 22 | 0d | Brent | 8h |
| 24 | 1.3.2.5 | Any non CAC login requirements? Air Force, etc. |  | 1d? | 2009-06-01 | 2009-06-01 | 23 | 0d | Brent | 8h |
| 25 | 1.3.3 | [*Deliverable] Chosen primary architectural components list (e.g. .Net Framework, SQL Server, Native SQL Server client driver, etc.) |  | 2d | 2009-06-02 | 2009-06-03 | 19 | 0d |  | 16h |
| 26 | 1.3.4 | [Deliverable] (Excel) matrix mapping use cases to functional units. E.g. the screens, reports, major subroutines & stored procedures that support each use case. Typically functional units are combined and re-used among more than one use case. |  | 5d | 2009-06-04 | 2009-06-10 | 25 | 0d |  | 40h |
| 27 | 1.3.5 | [*Deliverable] Initial prioritized list of functional units (ongoing, see development section below) |  | 10d | 2009-06-11 | 2009-06-24 | 26 | 0d |  | 80h |
| 28 | 1.3.6 | [*Deliverable] Wireframes of primary screens & reports with clarifying side notes where needed |  | 15d | 2009-06-25 | 2009-07-15 | 27 | 0d |  | 120h |
| 29 | 1.3.7 | Establish required level of built in application help (e.g. full blown context sensitive? Just key screenshots explained?) |  | 2d | 2009-07-16 | 2009-07-17 | 28 | 0d | Brent | 16h |

| ID | WBS | Task | Duration | Start | Finish | Predecessors | Total slack | Resources | Work |
| --- | --- | --- | --- | --- | --- | --- | --- | --- | --- |
| 30 | 1.3.8 | **[Deliverable] Physical relational data model** | 10d? | 2009-07-20 | 2009-07-31 | 29 | 0d | Brent | 176h |
| 31 | 1.3.8.1 | TBD work | 5d | 2009-07-20 | 2009-07-24 |  | 0d | Brent | 40h |
| 32 | 1.3.8.2 | revamping the audit log design | 3d | 2009-07-27 | 2009-07-29 | 31 | 0d | Brent | 24h |
| 33 | 1.3.8.3 | **revamping the status flag design** | 2d? | 2009-07-30 | 2009-07-31 | 32 | 0d | Brent | 32h |
| 34 | 1.3.8.3.1 | Forms status | 1d? | 2009-07-30 | 2009-07-30 |  | 0d | Brent | 8h |
| 35 | 1.3.8.3.2 | Customer status | 1d | 2009-07-31 | 2009-07-31 | 34 | 0d | Brent | 8h |
| 36 | 1.3.9 | Determine feasibility of running production pilot in parallel | 3d | 2009-08-03 | 2009-08-05 | 30 | 0d | Brent | 24h |
| 37 | 1.3.10 | [*Deliverable] Development Project Plan – Gantt chart of the WBS (Work Breakdown Structure of the primary application components) | 5d | 2009-08-06 | 2009-08-12 | 19, 36 | 0d |  | 40h |
| 38 | 1.4 | **Development** | 102d? | 2009-08-13 | 2010-01-01 | 17 | 0d | Brent | 3008h |
| 39 | 1.4.1 | Purchase DEV environment hardware and software | 1d | 2009-08-13 | 2009-08-13 |  | 0d | Melanie | 8h |
| 40 | 1.4.2 | **Stand up DEV environment at most appropriate location** | 5d | 2009-08-14 | 2009-08-20 | 39 | 0d | Brent | 40h |
| 41 | 1.4.2.1 | Is there a 5thSignal requirement for development to be physically detached from NIPRNET until final version has been officially approved? If so, co-location of the dev workstation and server becomes a physical constraint | 5d | 2009-08-14 | 2009-08-20 |  | 0d |  |  |
| 42 | 1.4.3 | Establish version control/change management system – e.g. Visual Source Safe | 1d? | 2009-08-21 | 2009-08-21 | 40 | 0d | Brent | 8h |
| 43 | 1.4.4 | Establish automated build script | 1d? | 2009-08-24 | 2009-08-24 | 42 | 0d | Brent | 8h |
| 44 | 1.4.5 | Establish new build notification distro list and deployment location (i.e. where everyone can readily find a current build to kick the tires whenever they have time) | 1d? | 2009-08-25 | 2009-08-25 | 43 | 0d | Brent | 8h |
| 45 | 1.4.6 | Establish SharePoint workspace for project communication – living prioritized functional unit list, status reports, deliverables, build links, etc. | 1d | 2009-08-26 | 2009-08-26 | 44 | 0d | Brent | 8h |
| 46 | 1.4.7 | **WBS** | 92d? | 2009-08-27 | 2010-01-01 | 45 | 0d | Brent | 2112h |
| 47 | 1.4.7.1 | **[*Deliverable] Application visual “shell”** | 10d? | 2009-08-27 | 2009-09-09 |  | 0d | Brent | 160h |
| 48 | 1.4.7.1.1 | Overall visual layout structure | 8d | 2009-08-27 | 2009-09-07 |  | 0d |  | 64h |
| 49 | 1.4.7.1.2 | Primary navigation elements (menus, nav bars, etc.) | 1d? | 2009-09-08 | 2009-09-08 | 48 | 0d |  | 8h |
| 50 | 1.4.7.1.3 | Standardized icons | 1d? | 2009-09-09 | 2009-09-09 | 49 | 0d |  | 8h |
| 51 | 1.4.7.2 | **Security model** | 14d? | 2009-09-10 | 2009-09-29 | 47 | 0d | Brent | 224h |
| 52 | 1.4.7.2.1 | Implement accredited security mechanisms | 10d | 2009-09-10 | 2009-09-23 | 24 | 0d | Brent | 80h |
| 53 | 1.4.7.2.2 | Client to SQL Server network encryption | 1d? | 2009-09-24 | 2009-09-24 | 19, 52 | 0d |  | 8h |
| 54 | 1.4.7.2.3 | SQL Server data encryption | 3d | 2009-09-25 | 2009-09-29 | 53 | 0d |  | 24h |

| ID | WBS | Task | Duration | Start | Finish | Predecessors | Total slack | Resources | Work |
| --- | --- | --- | --- | --- | --- | --- | --- | --- | --- |
| 55 | 1.4.7.3 | **Primary Workflow Screens** | 3d? | 2009-09-30 | 2009-10-02 | 51 | 0d | Brent | 48h |
| 56 | 1.4.7.3.1 | Sell new forms | 1d? | 2009-09-30 | 2009-09-30 |  | 0d | Brent | 8h |
| 57 | 1.4.7.3.2 | Rapid return forms | 1d? | 2009-10-01 | 2009-10-01 | 56 | 0d | Brent | 8h |
| 58 | 1.4.7.3.3 | Process & File returned forms | 1d? | 2009-10-02 | 2009-10-02 | 57 | 0d | Brent | 8h |
| 59 | 1.4.7.4 | **"List" Screens** | 5d | 2009-10-05 | 2009-10-09 | 55 | 0d | Brent | 80h |
| 60 | 1.4.7.4.1 | Customer search | 3d | 2009-10-05 | 2009-10-07 | 51 | 0d |  | 24h |
| 61 | 1.4.7.4.2 | Daily Activity - Primarily a "new forms" list | 2d | 2009-10-08 | 2009-10-09 | 60 | 0d | Brent | 16h |
| 62 | 1.4.7.5 | **Major business entity view/edit detail screens** | 14d? | 2009-10-12 | 2009-10-29 | 60, 59 | 0d | Brent | 256h |
| 63 | 1.4.7.5.1 | **User** | 2d? | 2009-10-12 | 2009-10-13 |  | 0d | Brent | 16h |
| 64 | 1.4.7.5.1.1 | Manager | 1d? | 2009-10-12 | 2009-10-12 |  | 0d |  |  |
| 65 | 1.4.7.5.1.2 | Agent | 1d? | 2009-10-13 | 2009-10-13 | 64 | 0d |  |  |
| 66 | 1.4.7.5.2 | **Customer** | 4d | 2009-10-14 | 2009-10-19 | 65 | 0d | Brent | 64h |
| 67 | 1.4.7.5.2.1 | Sponsor | 2d | 2009-10-14 | 2009-10-15 |  | 0d | Brent | 16h |
| 68 | 1.4.7.5.2.2 | Dependents - Spouse, children | 2d | 2009-10-16 | 2009-10-19 | 67 | 0d | Brent | 16h |
| 69 | 1.4.7.5.3 | Tax form | 3d | 2009-10-20 | 2009-10-22 | 67, 66 | 0d |  | 24h |
| 70 | 1.4.7.5.4 | Tax package | 1d | 2009-10-23 | 2009-10-23 | 69 | 0d |  | 8h |
| 71 | 1.4.7.5.5 | VAT Office (POC, Address, etc.) | 1d? | 2009-10-26 | 2009-10-26 | 70 | 0d |  | 8h |
| 72 | 1.4.7.5.6 | Vendor | 1d? | 2009-10-27 | 2009-10-27 | 71 | 0d |  | 8h |
| 73 | 1.4.7.5.7 | Transaction Type | 1d? | 2009-10-28 | 2009-10-28 | 72 | 0d | Brent | 8h |
| 74 | 1.4.7.5.8 | Goods & Services | 1d? | 2009-10-29 | 2009-10-29 | 73 | 0d |  | 8h |
| 75 | 1.4.7.6 | **Settings Screens** | 6d? | 2009-10-30 | 2009-11-06 | 62 | 0d | Brent | 96h |
| 76 | 1.4.7.6.1 | Printer/Form configuration | 3d | 2009-10-30 | 2009-11-03 |  | 0d | Brent | 24h |
| 77 | 1.4.7.6.2 | User Prefs - e.g. default filters, shortcut buttons, etc. | 2d | 2009-11-04 | 2009-11-05 | 76 | 0d | Brent | 16h |
| 78 | 1.4.7.6.3 | Local office settings | 1d? | 2009-11-06 | 2009-11-06 | 77 | 0d | Brent | 8h |
| 79 | 1.4.7.7 | New Forms Layout & Printing Subsystem (anticipating Euro Forms in 26 languages) | 10d | 2009-11-09 | 2009-11-20 | 75 | 0d | Brent | 80h |

| ID | WBS | Task | Duration | Start | Finish | Predecessors | Total slack | Resources | Work |
| --- | --- | --- | --- | --- | --- | --- | --- | --- | --- |
| 80 | 1.4.7.8 | **Reporting** | 20d? | 2009-11-23 | 2009-12-18 | 77, 79 | 0d | Brent | 352h |
| 81 | 1.4.7.8.1 | End of day | 3d | 2009-11-23 | 2009-11-25 |  | 0d |  | 24h |
| 82 | 1.4.7.8.2 | End of Year sales & counts by office | 2d | 2009-11-26 | 2009-11-27 | 81 | 0d | Brent | 16h |
| 83 | 1.4.7.8.3 | Issued/Outstanding/Voided Counts and $$ totals by Office/date range for German/Euro then by Priced/Unpriced | 10d | 2009-11-30 | 2009-12-11 | 82 | 0d | Brent | 80h |
| 84 | 1.4.7.8.4 | Customer count by office by status (barred, etc.) | 1d? | 2009-12-14 | 2009-12-14 | 83 | 0d | Brent | 8h |
| 85 | 1.4.7.8.5 | **Customs reports - Web Based, sortable, filterable and drill down to detail** | 4d? | 2009-12-15 | 2009-12-18 | 84 | 0d | Brent | 64h |
| 86 | 1.4.7.8.5.1 | vehicle | 1d? | 2009-12-15 | 2009-12-15 |  | 0d | Brent | 8h |
| 87 | 1.4.7.8.5.2 | firearms | 1d? | 2009-12-16 | 2009-12-16 | 86 | 0d | Brent | 8h |
| 88 | 1.4.7.8.5.3 | >10 forms in 60 days | 1d | 2009-12-17 | 2009-12-17 | 87 | 0d | Brent | 8h |
| 89 | 1.4.7.8.5.4 | >2000€ in month | 1d | 2009-12-18 | 2009-12-18 | 88 | 0d | Brent | 8h |
| 90 | 1.4.7.9 | Application help | 10d | 2009-12-21 | 2010-01-01 | 80 | 0d |  | 80h |
| 91 | 1.5 | **IA Certification & Accreditation** | 30d | 2010-01-04 | 2010-02-12 | 38 | 0d |  |  |
| 92 | 1.5.1 | Documentation | 10d | 2010-01-04 | 2010-01-15 |  | 0d |  |  |
| 93 | 1.5.2 | Accreditation Submission Process | 10d | 2010-01-18 | 2010-01-29 | 92 | 0d |  |  |
| 94 | 1.5.3 | Application changes | 10d | 2010-02-01 | 2010-02-12 | 93 | 0d |  |  |
| 95 | 1.6 | **User Testing (Dev Environment)** | 25d? | 2010-02-15 | 2010-03-19 | 92, 91 | 0d | Brent | 448h |
| 96 | 1.6.1 | Cyclic process of testing and further development - Testing feedback will be actively incorporated into work products; e.g. bug fixes, functional enhancements, test plan modifications, etc. - resulting in ongoing reprioritization of functional unit implem | 15d | 2010-02-15 | 2010-03-05 |  | 0d | Brent | 120h |
| 97 | 1.6.2 | **Test Plans** | 6d? | 2010-03-08 | 2010-03-15 | 96 | 0d | Brent | 96h |
| 98 | 1.6.2.1 | Generally correspond to use cases | 1d? | 2010-03-08 | 2010-03-08 |  | 0d | Brent | 8h |
| 99 | 1.6.2.2 | [*Deliverable] Develop initial test plans - Important Note: Tasking the builder as the primary test plan contributor is not optimal due to developer “tunnel vision”. Therefore, test plan input should primarily come from the appropriate stakeholders (Bus | 5d | 2010-03-09 | 2010-03-15 | 98 | 0d | Brent | 40h |
| 100 | 1.6.3 | Establish short list of savvy VAT clerks and other key players that will test partially functional builds on a regular ongoing basis | 1d? | 2010-03-16 | 2010-03-16 | 97 | 0d | Brent | 8h |
| 101 | 1.6.4 | [Deliverable] Status Reports - detailing user acceptance, notable feedback and changes | 3d | 2010-03-17 | 2010-03-19 | 100 | 0d | Brent | 24h |
| 102 | 1.7 | **Develop Training Materials** | 26d? | 2010-03-22 | 2010-04-26 | 95 | 0d | Brent | 416h |
| 103 | 1.7.1 | [Deliverable] PowerPoint screen-shot walk through of the primary “happy path” use cases | 5d | 2010-03-22 | 2010-03-26 |  | 0d | Brent | 40h |
| 104 | 1.7.2 | Establish training manual and courseware provider | 1d? | 2010-03-29 | 2010-03-29 | 103 | 0d | Brent | 8h |
| 105 | 1.7.3 | [*Deliverable] Training manual and courseware | 20d | 2010-03-30 | 2010-04-26 | 104 | 0d | TBD | 160h |

| ID | WBS | Task | Duration | Start | Finish | Predecessors | Total slack | Resources | Work |
| --- | --- | --- | --- | --- | --- | --- | --- | --- | --- |
| 106 | 1.8 | **Pilot (Production Environment)** | 22d | 2010-04-27 | 2010-05-26 | 102 | 0d | Brent | 328h |
| 107 | 1.8.1 | Stand up parallel production pilot environment | 3d | 2010-04-27 | 2010-04-29 |  | 0d |  |  |
| 108 | 1.8.2 | Select 1-3 desirable locations for running stable production V2 builds in parallel with V1 | 1d | 2010-04-30 | 2010-04-30 | 107 | 0d | Brent | 8h |
| 109 | 1.8.3 | Allow time for feedback, minor changes in functionality and documentation | 15d | 2010-05-03 | 2010-05-21 | 108 | 0d | Brent | 120h |
| 110 | 1.8.4 | [Deliverable] Status Reports - detailing user acceptance, notable feedback and changes | 3d | 2010-05-24 | 2010-05-26 | 108, 109 | 0d | Brent | 24h |
| 111 | 1.9 | **Full Rollout** | 26d? | 2010-05-27 | 2010-07-01 | 106 | 0d | Brent | 416h |
| 112 | 1.9.1 | Determine physical location of training – on-site vs. centralized | 1d? | 2010-05-27 | 2010-05-27 |  | 0d | Brent | 8h |
| 113 | 1.9.2 | Schedule and conduct training with VAT clerks in stages | 10d? | 2010-05-28 | 2010-06-10 | 112 | 0d | Brent | 80h |
| 114 | 1.9.3 | Stage release to a few offices at a time to manage production support workload | 10d | 2010-06-11 | 2010-06-24 | 113 | 0d | Brent | 80h |
| 115 | 1.9.4 | Plan for feedback and minimal changes; most feedback will go on a v2.”xyz” project plan list | 5d | 2010-06-25 | 2010-07-01 | 114 | 0d | Brent | 40h |
