# iTRAAC v2

Schedule from MS Project, 2009-04-14 to 2012-02-02, A marks actual dates.
Grizli777

## Calendars

- Standard: Mon-Fri 08:00-12:00, 13:00-17:00; Sat-Sun off.

## Resources

| Resource |
| --- |
| Del |
| Brent |
| Bill McNeil |
| TBD |
| ??? |
| Melanie |
| ASP |
| B |

## Schedule

| ID | WBS | Task | Type | Duration | Start | Finish | Predecessors | Complete | Remaining | Total slack | Free slack | Constraint | Resources | Work | Actual work |
| --- | --- | --- | --- | --- | --- | --- | --- | --- | --- | --- | --- | --- | --- | --- | --- |
| 1 | 1 | **iTRAAC v2 - Phase 1** |  | 733d? | 2009-04-14 A | 2012-02-02 |  | 4% | 705.49d? | 0d |  |  | Brent | 20216h | 935.32h |
| 2 | 1.1 | Implementing UTAP contract data entry web app |  | 120d | 2009-04-14 | 2009-09-28 |  |  |  | 21d |  |  |  |  |  |
| 3 | 1.2 | Waiting for development environment (software & VM) |  | 1d? | 2009-09-29 | 2009-09-29 | 2 |  |  | 21d |  |  |  |  |  |
| 4 | 1.3 | Initial Project Plan |  | 5d | 2009-10-01 | 2009-10-07 | 3 |  |  | 20d |  | start no earlier than 2009-10-01 | Brent | 40h |  |
| 5 | 1.4 | **Analysis** |  | 20d? | 2009-10-08 | 2009-11-04 | 4 |  |  | 20d |  |  | Brent | 520h |  |
| 6 | 1.4.1 | **Requirements gathering** |  | 12d? | 2009-10-08 | 2009-10-23 |  |  |  | 20d |  |  | Brent | 232h |  |
| 7 | 1.4.1.1 | Requirements Gap Analysis (v1 to v2) |  | 5d | 2009-10-08 | 2009-10-14 |  |  |  | 20d |  |  | Brent | 40h |  |
| 8 | 1.4.1.2 | Separate raw requirements into business vs. technical |  | 1d? | 2009-10-15 | 2009-10-15 | 7 |  |  | 20d |  |  | Brent | 8h |  |
| 9 | 1.4.1.3 | Perform initial requirements prioritization |  | 1d? | 2009-10-16 | 2009-10-16 | 8 |  |  | 20d |  |  | Brent | 8h |  |
| 10 | 1.4.1.4 | **[*Deliverable] Requirements Document** |  | 5d | 2009-10-19 | 2009-10-23 | 9 |  |  | 20d |  |  | Brent | 80h |  |
| 11 | 1.4.1.4.1 | Incorporate changes based on feedback and resubmit until approved |  | 5d | 2009-10-19 | 2009-10-23 |  |  |  | 20d |  |  | Brent | 40h |  |
| 12 | 1.4.2 | **[*Deliverable] Use cases (e.g. Create New User, Sell New VAT Forms Package)** |  | 6d | 2009-10-26 | 2009-11-02 | 6 |  |  | 20d |  |  | Brent | 96h |  |
| 13 | 1.4.2.1 | [Deliverable – Del] Example use case diagrams for reference |  | 1d | 2009-10-26 | 2009-10-26 |  |  |  | 20d |  |  | Del | 8h |  |
| 14 | 1.4.2.2 | Map business requirements into “Happy Path” style use cases (see Glossary) such that every major business requirement will be covered |  | 5d | 2009-10-27 | 2009-11-02 | 13 |  |  | 20d |  |  | Brent | 40h |  |
| 15 | 1.4.3 | **[*Deliverable] Statement of Scope** |  | 2d | 2009-11-03 | 2009-11-04 | 12 |  |  | 20d |  |  | Brent | 32h |  |
| 16 | 1.4.3.1 | Phase 1 - German VAT Forms |  | 2d | 2009-11-03 | 2009-11-04 |  |  |  | 20d |  |  | Brent | 16h |  |
| 17 | 1.4.3.2 | Phase 2 - European VAT Forms | milestone | 0d | 2009-11-04 | 2009-11-04 | 16 |  |  | 20d |  |  | Brent |  |  |
| 18 | 1.4.3.3 | Phase “x” - UTAP Support | milestone | 0d | 2009-11-04 | 2009-11-04 | 17 |  |  | 20d |  |  | Brent |  |  |
| 19 | 1.5 | **Design** |  | 58d? | 2009-11-05 | 2010-01-25 | 5 |  |  | 20d |  |  | Brent | 1088h |  |
| 20 | 1.5.1 | **[Deliverable - Bill McNeil and Del] Approved development architecture best practices document** |  | 1d? | 2009-11-05 | 2009-11-05 |  |  |  | 20d |  |  | Bill McNeil; Del | 32h |  |
| 21 | 1.5.1.1 | accredited security mechanisms |  | 1d? | 2009-11-05 | 2009-11-05 |  |  |  | 20d |  |  | Bill McNeil; Del | 16h |  |
| 22 | 1.5.2 | **Establish application login/authentication approach** |  | 5d? | 2009-11-06 | 2009-11-12 | 20 |  |  | 20d | 0d |  | Brent | 80h |  |
| 23 | 1.5.2.1 | AD or STAMIS workstations? |  | 1d? | 2009-11-06 | 2009-11-06 |  |  |  | 20d |  |  | Brent | 8h |  |
| 24 | 1.5.2.2 | CAC sign in? |  | 1d? | 2009-11-09 | 2009-11-09 | 23 |  |  | 20d |  |  | Brent | 8h |  |
| 25 | 1.5.2.3 | Single sign on to iTRAAC application? |  | 1d? | 2009-11-10 | 2009-11-10 | 24 |  |  | 20d |  |  | Brent | 8h |  |
| 26 | 1.5.2.4 | Microsoft “trusted security” connection to the database |  | 1d? | 2009-11-11 | 2009-11-11 | 25 |  |  | 20d |  |  | Brent | 8h |  |
| 27 | 1.5.2.5 | Any non CAC login requirements? Air Force, etc. |  | 1d? | 2009-11-12 | 2009-11-12 | 26 |  |  | 20d | 218d |  | Brent | 8h |  |
| 28 | 1.5.3 | [*Deliverable] Chosen primary architectural components list (e.g. .Net Framework, SQL Server, Native SQL Server client driver, etc.) |  | 2d | 2009-11-13 | 2009-11-16 | 22 |  |  | 20d |  |  |  | 16h |  |
| 29 | 1.5.4 | [Deliverable] (Excel) matrix mapping use cases to functional units. E.g. the screens, reports, major subroutines & stored procedures that support each use case. Typically functional units are combined and re-used among more than one use case. |  | 5d | 2009-11-17 | 2009-11-23 | 28 |  |  | 20d |  |  |  | 40h |  |
| 30 | 1.5.5 | [*Deliverable] Initial prioritized list of functional units (ongoing, see development section below) |  | 10d | 2009-11-24 | 2009-12-07 | 29 |  |  | 20d |  |  |  | 80h |  |
| 31 | 1.5.6 | [*Deliverable] Wireframes of primary screens & reports with clarifying side notes where needed |  | 15d | 2009-12-08 | 2009-12-28 | 30 |  |  | 20d |  |  |  | 120h |  |
| 32 | 1.5.7 | Establish required level of built in application help (e.g. full blown context sensitive? Just key screenshots explained?) |  | 2d | 2009-12-29 | 2009-12-30 | 31 |  |  | 20d |  |  | Brent | 16h |  |

| ID | WBS | Task | Duration | Start | Finish | Predecessors | Complete | Remaining | Total slack | Free slack | Resources | Work | Actual work |
| --- | --- | --- | --- | --- | --- | --- | --- | --- | --- | --- | --- | --- | --- |
| 33 | 1.5.8 | **[Deliverable] Physical relational data model** | 10d? | 2009-12-31 | 2010-01-13 | 32 |  |  | 20d |  | Brent | 176h |  |
| 34 | 1.5.8.1 | TBD work | 5d | 2009-12-31 | 2010-01-06 |  |  |  | 20d |  | Brent | 40h |  |
| 35 | 1.5.8.2 | revamping the audit log design | 3d | 2010-01-07 | 2010-01-11 | 34 |  |  | 20d |  | Brent | 24h |  |
| 36 | 1.5.8.3 | **revamping the status flag design** | 2d? | 2010-01-12 | 2010-01-13 | 35 |  |  | 20d |  | Brent | 32h |  |
| 37 | 1.5.8.3.1 | Forms status | 1d? | 2010-01-12 | 2010-01-12 |  |  |  | 20d | 0d | Brent | 8h |  |
| 38 | 1.5.8.3.2 | Customer status | 1d | 2010-01-13 | 2010-01-13 | 37 |  |  | 20d |  | Brent | 8h |  |
| 39 | 1.5.9 | Determine feasibility of running production pilot in parallel | 3d | 2010-01-14 | 2010-01-18 | 33 |  |  | 20d |  | Brent | 24h |  |
| 40 | 1.5.10 | [*Deliverable] Development Project Plan – Gantt chart of the WBS (Work Breakdown Structure of the primary application components) | 5d | 2010-01-19 | 2010-01-25 | 39 |  |  | 20d |  |  | 40h |  |
| 41 | 1.6 | Vista upgrades to iTRAAC Garrison Servers | 30d | 2010-01-26 | 2010-03-08 | 19 |  |  | 20d |  | Brent | 240h |  |
| 42 | 1.7 | Kilbourne Datacenter Meltdown | 30d | 2010-03-09 | 2010-04-19 | 41 |  |  | 20d |  |  |  |  |
| 43 | 1.8 | Personal Training (WPF, Army Requirements) | 30d | 2010-04-20 | 2010-05-31 | 42 |  |  | 20d |  | Brent | 240h |  |
| 44 | 1.9 | **Development** | 299d? | 2010-06-01 A | 2011-07-22 | 43 | 9% | 272.25d? | 0d |  | Brent | 9496h | 715.22h |
| 45 | 1.9.1 | **Stand up DEV environment** | 15d | 2010-06-01 | 2010-06-21 |  |  |  | 20d |  | ASP | 360h |  |
| 46 | 1.9.1.1 | Obtain & install DEV environment hardware | 5d | 2010-06-01 | 2010-06-07 |  |  |  | 20d |  | Melanie; Del | 80h |  |
| 47 | 1.9.1.2 | Obtain & install DEV environment software | 5d | 2010-06-08 | 2010-06-14 | 46 |  |  | 20d |  | Melanie; Del | 80h |  |
| 48 | 1.9.1.3 | Is there a 5thSignal requirement for development to be physically detached from NIPRNET until final version has been officially approved? If so, co-location of the dev workstation and server becomes a physical constraint | 5d | 2010-06-15 | 2010-06-21 | 47 |  |  | 20d |  | Melanie; Del | 80h |  |
| 49 | 1.9.2 | Establish version control/change management system – e.g. Visual Source Safe | 1d? | 2010-06-22 | 2010-06-22 | 45 |  |  | 20d |  | Brent | 8h |  |
| 50 | 1.9.3 | Establish automated build script | 1d? | 2010-06-23 | 2010-06-23 | 49 |  |  | 20d |  | Brent | 8h |  |
| 51 | 1.9.4 | Establish new build notification distro list and deployment location (i.e. where everyone can readily find a current build to kick the tires whenever they have time) | 1d? | 2010-06-24 | 2010-06-24 | 50 |  |  | 20d |  | Brent | 8h |  |
| 52 | 1.9.5 | Establish SharePoint workspace for project communication – living prioritized functional unit list, status reports, deliverables, build links, etc. | 1d | 2010-06-25 | 2010-06-25 | 51 |  |  | 20d |  | Brent | 8h |  |
| 53 | 1.9.6 | **WBS** | 280d? | 2010-06-28 A | 2011-07-22 | 52 | 10% | 253.33d? | 0d |  | Brent | 6712h | 523.43h |
| 54 | 1.9.6.1 | **[*Deliverable] Application visual “shell”** | 31d | 2010-06-28 | 2010-08-09 |  |  |  | 20d |  | Brent | 496h |  |
| 55 | 1.9.6.1.1 | Overall visual layout structure | 15d | 2010-06-28 | 2010-07-16 |  |  |  | 20d | 0d | Brent | 120h |  |
| 56 | 1.9.6.1.2 | Primary navigation elements (menus, nav bars, etc.) | 15d | 2010-07-19 | 2010-08-06 | 55 |  |  | 20d | 0d | Brent | 120h |  |
| 57 | 1.9.6.1.3 | Standardized icons | 1d | 2010-08-09 | 2010-08-09 | 56 |  |  | 20d |  | Brent | 8h |  |

| ID | WBS | Task | Duration | Start | Finish | Predecessors | Complete | Remaining | Total slack | Resources | Work | Actual work |
| --- | --- | --- | --- | --- | --- | --- | --- | --- | --- | --- | --- | --- |
| 58 | 1.9.6.2 | **Data Access** | 26d | 2010-08-10 A | 2010-09-14 | 54 | 70% | 7.8d | 0d | Brent | 528h | 336h |
| 59 | 1.9.6.2.1 | Business Object approach | 20d | 2010-08-10 A | 2010-09-06 |  | 70% | 6d | 0d | Brent | 160h | 112h |
| 60 | 1.9.6.2.2 | Modified, Load, Save | 20d | 2010-08-10 A | 2010-09-14 | 59 | 70% | 6d | 0d | Brent | 160h | 112h |
| 61 | 1.9.6.3 | **Security model** | 14d? | 2010-09-15 | 2010-10-04 | 58 |  |  | 0d | Brent | 224h |  |
| 62 | 1.9.6.3.1 | Implement accredited security mechanisms | 10d | 2010-09-15 | 2010-09-28 | 27 |  |  | 0d | Brent | 80h |  |
| 63 | 1.9.6.3.2 | Client to SQL Server network encryption | 1d? | 2010-09-29 | 2010-09-29 | 22, 62 |  |  | 0d | Brent | 8h |  |
| 64 | 1.9.6.3.3 | SQL Server host data encryption | 3d | 2010-09-30 | 2010-10-04 | 63 |  |  | 0d | Brent | 24h |  |
| 65 | 1.9.6.4 | **Primary Workflow Screens** | 13d | 2010-10-05 | 2010-10-21 | 61 |  |  | 0d | Brent | 208h |  |
| 66 | 1.9.6.4.1 | Sell new forms | 3d | 2010-10-05 | 2010-10-07 |  |  |  | 0d | Brent | 24h |  |
| 67 | 1.9.6.4.2 | Rapid return forms | 5d | 2010-10-08 | 2010-10-14 | 66 |  |  | 0d | Brent | 40h |  |
| 68 | 1.9.6.4.3 | Process & File returned forms | 5d | 2010-10-15 | 2010-10-21 | 67 |  |  | 0d | Brent | 40h |  |
| 69 | 1.9.6.5 | **"List" Screens** | 13d | 2010-10-22 | 2010-11-09 | 65 |  |  | 0d | Brent | 208h |  |
| 70 | 1.9.6.5.1 | Customer search | 10d | 2010-10-22 | 2010-11-04 |  |  |  | 0d | Brent | 80h |  |
| 71 | 1.9.6.5.2 | Daily Activity - Primarily a "new forms" list | 3d | 2010-11-05 | 2010-11-09 | 70 |  |  | 0d | Brent | 24h |  |
| 72 | 1.9.6.6 | **Major business entity view/edit detail screens** | 77d? | 2010-11-10 | 2011-02-24 | 69 |  |  | 0d | Brent | 1416h |  |
| 73 | 1.9.6.6.1 | **User** | 6d | 2010-11-10 | 2010-11-17 |  |  |  | 0d | Brent | 96h |  |
| 74 | 1.9.6.6.1.1 | Manager | 3d | 2010-11-10 | 2010-11-12 |  |  |  | 0d | Brent | 24h |  |
| 75 | 1.9.6.6.1.2 | Agent | 3d | 2010-11-15 | 2010-11-17 | 74 |  |  | 0d | Brent | 24h |  |
| 76 | 1.9.6.6.2 | **Customer** | 17d | 2010-11-18 | 2010-12-10 | 73 |  |  | 0d | Brent | 272h |  |
| 77 | 1.9.6.6.2.1 | Sponsor | 15d | 2010-11-18 | 2010-12-08 |  |  |  | 0d | Brent | 120h |  |
| 78 | 1.9.6.6.2.2 | Dependents - Spouse, children | 2d | 2010-12-09 | 2010-12-10 | 77 |  |  | 0d | Brent | 16h |  |
| 79 | 1.9.6.6.3 | Tax form | 30d | 2010-12-13 | 2011-01-21 | 76 |  |  | 0d | Brent | 240h |  |
| 80 | 1.9.6.6.4 | Tax package | 1d | 2011-01-24 | 2011-01-24 | 79 |  |  | 0d | Brent | 8h |  |
| 81 | 1.9.6.6.5 | VAT Office (POC, Address, etc.) | 5d | 2011-01-25 | 2011-01-31 | 80 |  |  | 0d | Brent | 40h |  |
| 82 | 1.9.6.6.6 | Vendor | 15d | 2011-02-01 | 2011-02-21 | 81 |  |  | 0d | Brent | 120h |  |
| 83 | 1.9.6.6.7 | Transaction Type | 1d? | 2011-02-22 | 2011-02-22 | 82 |  |  | 0d | Brent | 8h |  |
| 84 | 1.9.6.6.8 | Goods & Services | 2d | 2011-02-23 | 2011-02-24 | 83 |  |  | 0d | Brent | 16h |  |

| ID | WBS | Task | Duration | Start | Finish | Predecessors | Total slack | Resources | Work |
| --- | --- | --- | --- | --- | --- | --- | --- | --- | --- |
| 85 | 1.9.6.7 | **Settings Screens** | 16d | 2011-02-25 | 2011-03-18 | 72 | 0d | Brent | 256h |
| 86 | 1.9.6.7.1 | Printer/Form configuration | 3d | 2011-02-25 | 2011-03-01 |  | 0d | Brent | 24h |
| 87 | 1.9.6.7.2 | User Prefs - e.g. default filters, shortcut buttons, etc. | 10d | 2011-03-02 | 2011-03-15 | 86 | 0d | Brent | 80h |
| 88 | 1.9.6.7.3 | Local office settings | 3d | 2011-03-16 | 2011-03-18 | 87 | 0d | Brent | 24h |
| 89 | 1.9.6.8 | New Forms Layout & Printing Subsystem (anticipating Euro Forms in 26 languages) | 30d | 2011-03-21 | 2011-04-29 | 85 | 0d | Brent | 240h |
| 90 | 1.9.6.9 | **Reporting** | 40d | 2011-05-02 | 2011-06-24 | 89 | 0d | Brent | 736h |
| 91 | 1.9.6.9.1 | End of day | 5d | 2011-05-02 | 2011-05-06 |  | 0d | Brent | 40h |
| 92 | 1.9.6.9.2 | End of Year sales & counts by office | 5d | 2011-05-09 | 2011-05-13 | 91 | 0d | Brent | 40h |
| 93 | 1.9.6.9.3 | Issued/Outstanding/Voided Counts and $$ totals by Office/date range for German/Euro then by Priced/Unpriced | 10d | 2011-05-16 | 2011-05-27 | 92 | 0d | Brent | 80h |
| 94 | 1.9.6.9.4 | Customer count by office by status (barred, etc.) | 3d | 2011-05-30 | 2011-06-01 | 93 | 0d | Brent | 24h |
| 95 | 1.9.6.9.5 | **Customs reports - Web Based, sortable, filterable and drill down to detail** | 17d | 2011-06-02 | 2011-06-24 | 94 | 0d | Brent | 232h |
| 96 | 1.9.6.9.5.1 | Reporting framework | 5d | 2011-06-02 | 2011-06-08 |  | 0d |  |  |
| 97 | 1.9.6.9.5.2 | vehicle | 3d | 2011-06-09 | 2011-06-13 | 96 | 0d | Brent | 24h |
| 98 | 1.9.6.9.5.3 | firearms | 3d | 2011-06-14 | 2011-06-16 | 97 | 0d | Brent | 24h |
| 99 | 1.9.6.9.5.4 | >10 forms in 60 days | 3d | 2011-06-17 | 2011-06-21 | 98 | 0d | Brent | 24h |
| 100 | 1.9.6.9.5.5 | >2000€ in month | 3d | 2011-06-22 | 2011-06-24 | 99 | 0d | Brent | 24h |
| 101 | 1.9.6.10 | Application help | 20d | 2011-06-27 | 2011-07-22 | 90 | 0d | TBD | 160h |
| 102 | 1.10 | **IA Certification & Accreditation** | 40d | 2011-07-25 | 2011-09-16 | 44 | 0d | Brent; Del | 1120h |
| 103 | 1.10.1 | Documentation | 10d | 2011-07-25 | 2011-08-05 |  | 0d | Brent; Del | 160h |
| 104 | 1.10.2 | Accreditation Submission Process | 10d | 2011-08-08 | 2011-08-19 | 103 | 0d | Brent; Del | 160h |
| 105 | 1.10.3 | Application changes | 20d | 2011-08-22 | 2011-09-16 | 104 | 0d | Brent | 160h |
| 106 | 1.11 | **User Testing (Dev Environment)** | 25d? | 2011-09-19 | 2011-10-21 | 102 | 0d | Brent | 448h |
| 107 | 1.11.1 | Cyclic process of testing and further development - Testing feedback will be actively incorporated into work products; e.g. bug fixes, functional enhancements, test plan modifications, etc. - resulting in ongoing reprioritization of functional unit implem | 15d | 2011-09-19 | 2011-10-07 |  | 0d | Brent | 120h |
| 108 | 1.11.2 | **Test Plans** | 6d? | 2011-10-10 | 2011-10-17 | 107 | 0d | Brent | 96h |
| 109 | 1.11.2.1 | Generally correspond to use cases | 1d? | 2011-10-10 | 2011-10-10 |  | 0d | Brent | 8h |
| 110 | 1.11.2.2 | [*Deliverable] Develop initial test plans - Important Note: Tasking the builder as the primary test plan contributor is not optimal due to developer “tunnel vision”. Therefore, test plan input should primarily come from the appropriate stakeholders (Bus | 5d | 2011-10-11 | 2011-10-17 | 109 | 0d | Brent | 40h |
| 111 | 1.11.3 | Establish short list of savvy VAT clerks and other key players that will test partially functional builds on a regular ongoing basis | 1d? | 2011-10-18 | 2011-10-18 | 108 | 0d | Brent | 8h |
| 112 | 1.11.4 | [Deliverable] Status Reports - detailing user acceptance, notable feedback and changes | 3d | 2011-10-19 | 2011-10-21 | 111 | 0d | Brent | 24h |

| ID | WBS | Task | Duration | Start | Finish | Predecessors | Total slack | Resources | Work |
| --- | --- | --- | --- | --- | --- | --- | --- | --- | --- |
| 113 | 1.12 | **Develop Training Materials** | 26d? | 2011-10-24 | 2011-11-28 | 106 | 0d | Brent | 416h |
| 114 | 1.12.1 | [Deliverable] PowerPoint screen-shot walk through of the primary “happy path” use cases | 5d | 2011-10-24 | 2011-10-28 |  | 0d | Brent | 40h |
| 115 | 1.12.2 | Establish training manual and courseware provider | 1d? | 2011-10-31 | 2011-10-31 | 114 | 0d | Brent | 8h |
| 116 | 1.12.3 | [*Deliverable] Training manual and courseware | 20d | 2011-11-01 | 2011-11-28 | 115 | 0d | TBD | 160h |
| 117 | 1.13 | **Pilot (Production Environment)** | 22d | 2011-11-29 | 2011-12-28 | 113 | 0d | Brent | 328h |
| 118 | 1.13.1 | Stand up parallel production pilot environment | 3d | 2011-11-29 | 2011-12-01 |  | 0d |  |  |
| 119 | 1.13.2 | Select 1-3 desirable locations for running stable production V2 builds in parallel with V1 | 1d | 2011-12-02 | 2011-12-02 | 118 | 0d | Brent | 8h |
| 120 | 1.13.3 | Allow time for feedback, minor changes in functionality and documentation | 15d | 2011-12-05 | 2011-12-23 | 119 | 0d | Brent | 120h |
| 121 | 1.13.4 | [Deliverable] Status Reports - detailing user acceptance, notable feedback and changes | 3d | 2011-12-26 | 2011-12-28 | 120 | 0d | Brent | 24h |
| 122 | 1.14 | **Full Rollout** | 26d? | 2011-12-29 | 2012-02-02 | 117 | 0d | Brent | 416h |
| 123 | 1.14.1 | Determine physical location of training – on-site vs. centralized | 1d? | 2011-12-29 | 2011-12-29 |  | 0d | Brent | 8h |
| 124 | 1.14.2 | Schedule and conduct training with VAT clerks in stages | 10d? | 2011-12-30 | 2012-01-12 | 123 | 0d | Brent | 80h |
| 125 | 1.14.3 | Stage release to a few offices at a time to manage production support workload | 10d | 2012-01-13 | 2012-01-26 | 124 | 0d | Brent | 80h |
| 126 | 1.14.4 | Plan for feedback and minimal changes; most feedback will go on a v2.”xyz” project plan list | 5d | 2012-01-27 | 2012-02-02 | 125 | 0d | Brent | 40h |
